# Programa Logística Integrada

Schedule from MS Project XML, 2026-06-01 to 2027-04-30, A marks actual dates.

## Resources

| Resource |
| --- |
| Pedro Soto |
| Carla Vidal |
| Luis Mora |
| Diego Paz |

## Schedule

| ID | WBS | Task | Type | Start | Finish | Predecessors | Complete | Baseline start | Baseline finish | Resources | Cost | Actual cost |
| --- | --- | --- | --- | --- | --- | --- | --- | --- | --- | --- | --- | --- |
| 1 | 1 | Kickoff del programa | milestone | 2026-06-01 A | 2026-06-01 A |  | 100% |  |  |  |  |  |
| 2 | 2 | **ERP** |  | 2026-06-02 | 2027-01-15 |  |  |  |  |  | 480,000,000 |  |
| 3 | 2.1 | Levantamiento de procesos |  | 2026-06-02 A | 2026-07-15 A | 1 | 100% | 2026-06-02 | 2026-07-10 | Pedro Soto | 60,000,000 | 65,000,000 |
| 4 | 2.2 | Configuración del ERP |  | 2026-07-16 A | 2026-10-31 | 3 | 80% | 2026-07-13 | 2026-10-15 | Pedro Soto; Luis Mora [60%] | 180,000,000 | 120,000,000 |
| 5 | 2.3 | Migración de datos |  | 2026-11-01 | 2026-12-31 | 4 |  |  |  |  | 120,000,000 |  |
| 6 | 2.4 | ERP en producción | milestone | 2027-01-15 | 2027-01-15 | 5 |  |  |  |  |  |  |
| 7 | 3 | **App de despacho** |  | 2026-06-15 | 2027-03-20 |  |  |  |  |  |  |  |
| 8 | 3.1 | Diseño UX de la app |  | 2026-06-15 | 2026-07-31 | 1 | 100% |  |  |  | 45,000,000 | 44,000,000 |
| 9 | 3.2 | Desarrollo de la app |  | 2026-08-01 | 2027-01-31 | 8 | 45% |  |  | Carla Vidal; Luis Mora [40%] | 160,000,000 | 90,000,000 |
| 10 | 3.3 | Pruebas de la app |  | 2026-08-08 | 2027-01-31 | 9SS+5d, 9FF | 30% |  |  |  |  |  |
| 11 | 3.4 | Piloto con choferes |  | 2027-02-01 | 2027-03-15 | 10, 6 |  |  |  |  |  |  |
| 12 | 4 | **Portal de clientes** |  | 2026-09-01 | 2027-04-30 |  |  |  |  |  |  |  |
| 13 | 4.1 | Diseño del portal |  | 2026-09-01 | 2026-10-31 | 3 | 60% |  |  | Diego Paz |  |  |
| 14 | 4.2 | Portal en producción | milestone | 2027-04-30 | 2027-04-30 | 13 |  |  |  |  |  |  |
